# 家校互通

Schedule from MS Project, 2019-03-28 to 2019-05-03.

## Calendars

- 标准: Mon-Fri 08:00-12:00, 13:00-17:00; Sat-Sun off.

## Resources

| Resource |
| --- |
| 程序员1 |
| 程序员2 |
| 测试员 |
| 项目经理 |
| UI设计员1 |
| UI设计员2 |

## Schedule

| ID | WBS | Task | Duration | Start | Finish | Predecessors | Total slack | Free slack | Constraint | Resources | Work |
| --- | --- | --- | --- | --- | --- | --- | --- | --- | --- | --- | --- |
| 1 | 1 | **启动** | 3d | 2019-03-28 | 2019-04-01 |  | 2d |  |  |  | 22h |
| 2 | 1.1 | 组建核心团队 | 1d | 2019-03-28 | 2019-03-28 |  | 25d | 0d |  | 项目经理 [25%] | 2h |
| 3 | 1.2 | 干系人分析 | 1d | 2019-03-28 | 2019-03-28 |  | 25d | 0d | start no earlier than 2019-03-28 | 项目经理 [25%] | 2h |
| 4 | 1.3 | 里程碑计划 | 1d | 2019-03-28 | 2019-03-28 |  | 25d | 0d | start no earlier than 2019-03-28 | 项目经理 [25%] | 2h |
| 5 | 1.4 | 制定项目章程 | 1d | 2019-03-29 | 2019-03-29 | 2, 3, 4 | 25d |  | start no earlier than 2019-03-29 | 项目经理 | 8h |
| 6 | 1.5 | 项目启动大会 | 1d | 2019-04-01 | 2019-04-01 |  | 0d |  | start no earlier than 2019-04-01 | 项目经理 | 8h |
| 7 | 2 | **规划** | 23d | 2019-04-02 | 2019-05-02 |  | 0d |  |  |  | 840.8h |
| 8 | 2.1 | **规划范围** | 5d | 2019-04-02 | 2019-04-08 |  | 0d |  |  |  | 52h |
| 9 | 2.1.1 | 制定需求说明书 | 1d | 2019-04-02 | 2019-04-02 | 6 | 0d |  |  | 项目经理 | 8h |
| 10 | 2.1.2 | 界面概要设计 | 1d | 2019-04-03 | 2019-04-03 | 9 | 1d |  |  | UI设计员1; UI设计员2 | 16h |
| 11 | 2.1.3 | 设计详细说明书 | 2d | 2019-04-03 | 2019-04-04 | 9 | 0d |  |  | 项目经理 [50%] | 8h |
| 12 | 2.1.4 | 范围说明书 | 1d | 2019-04-03 | 2019-04-03 | 9 | 1d |  |  | 项目经理 [50%] | 4h |
| 13 | 2.1.5 | 创建WBS | 1d | 2019-04-05 | 2019-04-05 | 10, 11, 12 | 0d |  |  | 项目经理 | 8h |
| 14 | 2.1.6 | 形成范围基准 | 1d | 2019-04-08 | 2019-04-08 | 13 | 0d |  |  | 项目经理 | 8h |
| 15 | 2.2 | **规划时间** | 5d | 2019-04-09 | 2019-04-15 |  | 0d |  |  |  | 34.4h |
| 16 | 2.2.1 | 排列工作包顺序 | 1d | 2019-04-09 | 2019-04-09 | 14 | 0d |  |  | 项目经理 | 8h |
| 17 | 2.2.2 | 估算资源 | 1d | 2019-04-10 | 2019-04-10 | 16 | 0d |  |  | 项目经理 | 8h |
| 18 | 2.2.3 | 估算持续时间 | 1d | 2019-04-11 | 2019-04-11 | 17 | 9d | 0d |  | 项目经理 [30%] | 2.4h |
| 19 | 2.2.4 | 制定进度计划 | 1d | 2019-04-12 | 2019-04-12 | 18 | 9d | 0d |  | 项目经理 | 8h |
| 20 | 2.2.5 | 制定进度基准 | 1d | 2019-04-15 | 2019-04-15 | 19 | 9d | 0d |  | 项目经理 | 8h |
| 21 | 2.3 | **规划成本** | 2d | 2019-04-16 | 2019-04-17 |  | 9d | 0d |  |  | 16h |
| 22 | 2.3.1 | 项目成本估算 | 1d | 2019-04-16 | 2019-04-16 | 20 | 9d | 0d |  | 项目经理 | 8h |
| 23 | 2.3.2 | 项目预算 | 1d | 2019-04-17 | 2019-04-17 | 22 | 9d |  |  | 项目经理 | 8h |
| 24 | 2.4 | **规划质量** | 2d | 2019-04-09 | 2019-04-10 |  | 14d | 4d |  |  | 16h |
| 25 | 2.4.1 | 制定测试计划 | 1d | 2019-04-09 | 2019-04-09 | 14 | 14d | 0d |  | 测试员 | 8h |
| 26 | 2.4.2 | 制定测试用例 | 1d | 2019-04-10 | 2019-04-10 | 25 | 14d |  |  | 测试员 | 8h |

| ID | WBS | Task | Type | Duration | Start | Finish | Predecessors | Total slack | Free slack | Resources | Work |
| --- | --- | --- | --- | --- | --- | --- | --- | --- | --- | --- | --- |
| 27 | 2.5 | **规划人力资源** |  | 4.33d | 2019-04-11 | 2019-04-17 |  | 8.67d | 0d |  | 16h |
| 28 | 2.5.1 | 制定人力资源计划 |  | 3.33d | 2019-04-11 | 2019-04-16 | 17 | 8.67d | 0d | 项目经理 [30%] | 8h |
| 29 | 2.5.2 | 制定人员配备管理计划 |  | 1d | 2019-04-16 | 2019-04-17 | 28 | 8.67d | 0d | 项目经理 | 8h |
| 30 | 2.6 | **规划沟通** |  | 1d | 2019-04-17 | 2019-04-18 |  | 8.67d | 0d |  | 8h |
| 31 | 2.6.1 | 制定沟通管理计划 |  | 1d | 2019-04-17 | 2019-04-18 | 29 | 8.67d | 0d | 项目经理 | 8h |
| 32 | 2.7 | **规划风险** |  | 3d | 2019-04-17 | 2019-04-19 |  | 0d |  |  | 24h |
| 33 | 2.7.1 | 识别风险 | manual | 1d | 2019-04-17 | 2019-04-17 | 15, 21, 24, 27, 30 |  |  | 项目经理 | 8h |
| 34 | 2.7.2 | 风险分析 | manual | 1d | 2019-04-18 | 2019-04-18 | 33 |  |  | 项目经理 | 8h |
| 35 | 2.7.3 | 制定风险登记册 | manual | 1d | 2019-04-19 | 2019-04-19 | 34 |  |  | 项目经理 | 8h |
| 36 | 2.8 | 规划整合 |  | 1d | 2019-04-18 | 2019-04-19 | 31 | 10.67d |  | 项目经理 | 8h |
| 37 | 2.9 | **执行与监控** |  | 16d | 2019-04-11 | 2019-05-02 |  | 0d |  |  | 666.4h |
| 38 | 2.9.1 | 组建项目团队 |  | 1d | 2019-04-11 | 2019-04-11 | 17 | 0d |  | 项目经理 [30%] | 2.4h |
| 39 | 2.9.2 | **项目执行** |  | 14d | 2019-04-12 | 2019-05-01 |  | 0d |  |  | 416h |
| 40 | 2.9.2.1 | **教师模块** |  | 12d | 2019-04-12 | 2019-04-29 |  | 2d |  |  | 192h |
| 41 | 2.9.2.1.1 | 登录 |  | 2d | 2019-04-12 | 2019-04-15 | 38 | 2d | 0d | UI设计员1; 程序员1 | 32h |
| 42 | 2.9.2.1.2 | 首页 |  | 2d | 2019-04-16 | 2019-04-17 | 41 | 2d | 0d | UI设计员1; 程序员1 | 32h |
| 43 | 2.9.2.1.3 | 发布作业 |  | 2d | 2019-04-18 | 2019-04-19 | 42 | 2d | 0d | UI设计员1; 程序员1 | 32h |
| 44 | 2.9.2.1.4 | 发布公告 |  | 2d | 2019-04-22 | 2019-04-23 | 43 | 2d | 0d | UI设计员1; 程序员1 | 32h |
| 45 | 2.9.2.1.5 | 查看接送时间 |  | 2d | 2019-04-24 | 2019-04-25 | 44 | 2d | 0d | UI设计员1; 程序员1 | 32h |
| 46 | 2.9.2.1.6 | 个人中心 |  | 2d | 2019-04-26 | 2019-04-29 | 45 | 2d |  | UI设计员1; 程序员1 | 32h |
| 47 | 2.9.2.2 | **家长模块** |  | 14d | 2019-04-12 | 2019-05-01 |  | 0d |  |  | 224h |
| 48 | 2.9.2.2.1 | 登录 |  | 2d | 2019-04-12 | 2019-04-15 | 38 | 0d |  | UI设计员2; 程序员2 | 32h |
| 49 | 2.9.2.2.2 | 首页 |  | 2d | 2019-04-16 | 2019-04-17 | 48 | 0d |  | UI设计员2; 程序员2 | 32h |
| 50 | 2.9.2.2.3 | 发布作业 |  | 2d | 2019-04-18 | 2019-04-19 | 49 | 0d |  | UI设计员2; 程序员2 | 32h |
| 51 | 2.9.2.2.4 | 发布公告 |  | 2d | 2019-04-22 | 2019-04-23 | 50 | 0d |  | UI设计员2; 程序员2 | 32h |
| 52 | 2.9.2.2.5 | 查看接送时间 |  | 2d | 2019-04-24 | 2019-04-25 | 51 | 0d |  | UI设计员2; 程序员2 | 32h |
| 53 | 2.9.2.2.6 | 个人中心 |  | 2d | 2019-04-26 | 2019-04-29 | 52 | 0d |  | UI设计员2; 程序员2 | 32h |
| 54 | 2.9.2.2.7 | 创建接送时间 |  | 2d | 2019-04-30 | 2019-05-01 | 53 | 0d |  | UI设计员2; 程序员2 | 32h |

| ID | WBS | Task | Duration | Start | Finish | Predecessors | Total slack | Free slack | Resources | Work |
| --- | --- | --- | --- | --- | --- | --- | --- | --- | --- | --- |
| 55 | 2.9.3 | **项目监控** | 4d | 2019-04-12 | 2019-04-17 |  | 12d |  |  | 32h |
| 56 | 2.9.3.1 | 各项指标监控 | 1d | 2019-04-12 | 2019-04-12 | 38 | 12d | 0d | 项目经理 | 8h |
| 57 | 2.9.3.2 | 监控评审 | 1d | 2019-04-15 | 2019-04-15 | 56 | 12d | 0d | 项目经理 | 8h |
| 58 | 2.9.3.3 | 变更评审 | 1d | 2019-04-16 | 2019-04-16 | 57 | 12d | 0d | 项目经理 | 8h |
| 59 | 2.9.3.4 | 例会 | 1d | 2019-04-17 | 2019-04-17 | 58 | 12d |  | 项目经理 | 8h |
| 60 | 2.9.4 | **管理干系人** | 1d | 2019-04-12 | 2019-04-12 |  | 15d |  |  | 24h |
| 61 | 2.9.4.1 | 发布项目信息 | 1d | 2019-04-12 | 2019-04-12 | 38 | 15d |  | 项目经理 | 8h |
| 62 | 2.9.4.2 | 报告监控指标 | 1d | 2019-04-12 | 2019-04-12 | 38 | 15d |  | 项目经理 | 8h |
| 63 | 2.9.4.3 | 干系人沟通 | 1d | 2019-04-12 | 2019-04-12 | 38 | 15d |  | 项目经理 | 8h |
| 64 | 2.9.5 | **团队建设** | 1d | 2019-04-12 | 2019-04-12 |  | 15d |  |  | 144h |
| 65 | 2.9.5.1 | 培训 | 1d | 2019-04-12 | 2019-04-12 | 38 | 15d |  | UI设计员1; 测试员; 程序员1; 程序员2; UI设计员2; 项目经理 | 48h |
| 66 | 2.9.5.2 | 娱乐活动 | 1d | 2019-04-12 | 2019-04-12 | 38 | 15d |  | UI设计员1; 测试员; 程序员1; 程序员2; UI设计员2; 项目经理 | 48h |
| 67 | 2.9.5.3 | 沟通 | 1d | 2019-04-12 | 2019-04-12 | 38 | 15d |  | UI设计员1; 程序员1; 程序员2; 项目经理; UI设计员2; 测试员 | 48h |
| 68 | 2.9.6 | 项目验收 | 1d | 2019-05-02 | 2019-05-02 | 39 | 0d |  | UI设计员1; 程序员1; 程序员2; 项目经理; UI设计员2; 测试员 | 48h |
| 69 | 3 | **收尾** | 1d | 2019-05-03 | 2019-05-03 |  | 0d |  |  | 96h |
| 70 | 3.1 | 项目终验 | 1d | 2019-05-03 | 2019-05-03 | 68 | 0d |  | UI设计员1; 程序员1; 程序员2; 项目经理; UI设计员2; 测试员 | 48h |
| 71 | 3.2 | 项目内部收尾 | 1d | 2019-05-03 | 2019-05-03 | 68 | 0d |  | UI设计员1; 程序员1; 程序员2; 项目经理; UI设计员2; 测试员 | 48h |
